# 农选MBS

Schedule from MS Project, 2020-03-20 to 2020-04-20, costs in ¥.

## Calendars

- 标准: Mon-Fri 08:00-12:00, 13:00-17:00; Sat-Sun off.

## Resources

| Resource |
| --- |
| 项目经理 |
| UI专家 |
| 需求专家 |
| 产品经理 |
| 设计专家 |
| 质量专家 |
| 程序员1 |
| 程序员2 |
| 程序员3 |
| 测试员1 |
| 测试员2 |

## Schedule

| ID | WBS | Task | Type | Duration | Start | Finish | Predecessors | Total slack | Resources | Work | Cost |
| --- | --- | --- | --- | --- | --- | --- | --- | --- | --- | --- | --- |
| 1 | 1 | **启动** |  | 3d | 2020-03-20 | 2020-03-24 |  | 0d |  | 104h | 4,640 |
| 2 | 1.1 | 组建核心团队 | manual | 1d | 2020-03-20 | 2020-03-20 |  |  | 项目经理; UI专家; 设计专家; 需求专家; 质量专家 | 40h | 1,840 |
| 3 | 1.2 | 干系人分析 | manual | 1d | 2020-03-20 | 2020-03-20 |  |  | 项目经理 | 8h | 320 |
| 4 | 1.3 | 里程碑计划 | manual | 1d | 2020-03-20 | 2020-03-20 |  |  | 项目经理 | 8h | 320 |
| 5 | 1.4 | 制定项目章程 | manual | 1d | 2020-03-23 | 2020-03-23 | 2, 3, 4 |  | 项目经理 | 8h | 320 |
| 6 | 1.5 | 项目启动大会 | manual | 1d | 2020-03-24 | 2020-03-24 | 5 |  | 项目经理; 需求专家; 设计专家; UI专家; 质量专家 | 40h | 1,840 |
| 7 | 2 | **规划** |  | 16d | 2020-03-25 | 2020-04-15 |  | 0d |  | 200h | 8,320 |
| 8 | 2.1 | **规划范围** |  | 4d | 2020-03-25 | 2020-03-30 |  | 0d |  | 48h | 2,080 |
| 9 | 2.1.1 | 制定需求说明书 | manual | 1d | 2020-03-25 | 2020-03-25 | 6 |  | 需求专家 | 8h | 400 |
| 10 | 2.1.2 | 界面设计 | manual | 1d | 2020-03-26 | 2020-03-26 | 9 |  | UI专家 | 8h | 400 |
| 11 | 2.1.3 | 详细设计说明书 | manual | 1d | 2020-03-26 | 2020-03-26 | 9 |  | 设计专家 | 8h | 320 |
| 12 | 2.1.4 | 范围说明书 | manual | 1d | 2020-03-26 | 2020-03-26 | 9 |  | 项目经理 | 8h | 320 |
| 13 | 2.1.5 | 创建WBS | manual | 1d | 2020-03-27 | 2020-03-27 | 10, 11, 12 |  | 项目经理 | 8h | 320 |
| 14 | 2.1.6 | 形成范围基准 | manual | 1d | 2020-03-30 | 2020-03-30 | 13 |  | 项目经理 | 8h | 320 |
| 15 | 2.2 | **规划时间** |  | 5d | 2020-03-31 | 2020-04-06 |  | 0d |  | 40h | 1,600 |
| 16 | 2.2.1 | 排列工作包顺序 | manual | 1d | 2020-03-31 | 2020-03-31 | 14 |  | 项目经理 | 8h | 320 |
| 17 | 2.2.2 | 估算资源 | manual | 1d | 2020-04-01 | 2020-04-01 | 16 |  | 项目经理 | 8h | 320 |
| 18 | 2.2.3 | 估算持续时间 | manual | 1d | 2020-04-02 | 2020-04-02 | 17 |  | 项目经理 | 8h | 320 |
| 19 | 2.2.4 | 制定进度计划 | manual | 1d | 2020-04-03 | 2020-04-03 | 18 |  | 项目经理 | 8h | 320 |
| 20 | 2.2.5 | 形成进度基准 | manual | 1d | 2020-04-06 | 2020-04-06 | 19 |  | 项目经理 | 8h | 320 |
| 21 | 2.3 | **规划成本** |  | 3d | 2020-04-07 | 2020-04-09 |  | 0d |  | 24h | 960 |
| 22 | 2.3.1 | 项目成本估算 | manual | 1d | 2020-04-07 | 2020-04-07 | 20 |  | 项目经理 | 8h | 320 |
| 23 | 2.3.2 | 项目预算 | manual | 1d | 2020-04-08 | 2020-04-08 | 22 |  | 项目经理 | 8h | 320 |
| 24 | 2.3.3 | 形成范围基准 | manual | 1d | 2020-04-09 | 2020-04-09 | 23 |  | 项目经理 | 8h | 320 |

| ID | WBS | Task | Type | Duration | Start | Finish | Predecessors | Total slack | Resources | Work | Cost |
| --- | --- | --- | --- | --- | --- | --- | --- | --- | --- | --- | --- |
| 25 | 2.4 | **规划质量** |  | 2d | 2020-03-31 | 2020-04-01 |  | 0d |  | 16h | 800 |
| 26 | 2.4.1 | 制定测试计划 | manual | 1d | 2020-03-31 | 2020-03-31 | 14 |  | 质量专家 | 8h | 400 |
| 27 | 2.4.2 | 制定测试用例 | manual | 1d | 2020-04-01 | 2020-04-01 | 26 |  | 质量专家 | 8h | 400 |
| 28 | 2.5 | **规划人力资源** |  | 2d | 2020-04-02 | 2020-04-03 |  | 0d |  | 16h | 640 |
| 29 | 2.5.1 | 制定人力资源计划 | manual | 1d | 2020-04-02 | 2020-04-02 | 17 |  | 项目经理 | 8h | 320 |
| 30 | 2.5.2 | 制定人员配备管理计划 | manual | 1d | 2020-04-03 | 2020-04-03 | 29 |  | 项目经理 | 8h | 320 |
| 31 | 2.6 | **规划沟通** |  | 1d | 2020-04-06 | 2020-04-06 |  | 0d |  | 8h | 320 |
| 32 | 2.6.1 | 制定沟通管理计划 | manual | 1d | 2020-04-06 | 2020-04-06 | 30 |  | 项目经理 | 8h | 320 |
| 33 | 2.7 | **规划采购** |  | 2d | 2020-04-02 | 2020-04-03 |  | 0d |  | 16h | 640 |
| 34 | 2.7.1 | 自制外购分析 | manual | 1d | 2020-04-02 | 2020-04-02 | 17 |  | 项目经理 | 8h | 320 |
| 35 | 2.7.2 | 制定采购文件 | manual | 1d | 2020-04-03 | 2020-04-03 | 34 |  | 项目经理 | 8h | 320 |
| 36 | 2.8 | **规划风险** |  | 3d | 2020-04-10 | 2020-04-14 |  | 0d |  | 24h | 960 |
| 37 | 2.8.1 | 识别风险 | manual | 1d | 2020-04-10 | 2020-04-10 | 15, 21, 25, 28 |  | 项目经理 | 8h | 320 |
| 38 | 2.8.2 | 风险分析 | manual | 1d | 2020-04-13 | 2020-04-13 | 37 |  | 项目经理 | 8h | 320 |
| 39 | 2.8.3 | 制定风险登记册 | manual | 1d | 2020-04-14 | 2020-04-14 | 38 |  | 项目经理 | 8h | 320 |
| 40 | 2.9 | 规划整合 | manual | 1d | 2020-04-15 | 2020-04-15 | 39 |  | 项目经理 | 8h | 320 |
| 41 | 3 | **执行与监控** |  | 12d | 2020-04-02 | 2020-04-17 |  | 0d |  | 608h | 27,840 |
| 42 | 3.1 | 组件项目团队 | manual | 1d | 2020-04-02 | 2020-04-02 | 17 |  | 项目经理; 测试员1 | 16h | 640 |
| 43 | 3.2 | **项目执行** |  | 10d | 2020-04-03 | 2020-04-16 |  | 0d |  | 176h | 8,800 |
| 44 | 3.2.1 | **用户模块** |  | 10d | 2020-04-03 | 2020-04-16 |  | 0d |  | 96h | 4,800 |
| 45 | 3.2.1.1 | 注册登录 | manual | 1d | 2020-04-03 | 2020-04-03 | 42 |  | 程序员1 | 8h | 400 |
| 46 | 3.2.1.2 | 忘记密码 | manual | 1d | 2020-04-06 | 2020-04-06 | 45 |  | 程序员1 | 8h | 400 |
| 47 | 3.2.1.3 | 首页 | manual | 1d | 2020-04-07 | 2020-04-07 | 46 |  | 程序员1 | 8h | 400 |
| 48 | 3.2.1.4 | 分类 | manual | 1d | 2020-04-08 | 2020-04-08 | 47 |  | 程序员1 | 8h | 400 |
| 49 | 3.2.1.5 | 浏览商品 | manual | 1d | 2020-04-09 | 2020-04-09 | 48 |  | 程序员1 | 8h | 400 |
| 50 | 3.2.1.6 | 搜索商品 | manual | 1d | 2020-04-10 | 2020-04-10 | 49 |  | 程序员1 | 8h | 400 |
| 51 | 3.2.1.7 | 购物车 | manual | 1d | 2020-04-13 | 2020-04-13 | 50 |  | 程序员1 | 8h | 400 |
| 52 | 3.2.1.8 | 我的收藏 | manual | 1d | 2020-04-14 | 2020-04-14 | 51 |  | 程序员1 | 8h | 400 |
| 53 | 3.2.1.9 | 下单 | manual | 1d | 2020-04-15 | 2020-04-15 | 52 |  | 程序员1 | 8h | 400 |
| 54 | 3.2.1.10 | 我的订单 | manual | 1d | 2020-04-15 | 2020-04-15 | 52 |  | 程序员1 | 8h | 400 |
| 55 | 3.2.1.11 | 订单状态 | manual | 1d | 2020-04-15 | 2020-04-15 | 52 |  | 程序员1 | 8h | 400 |
| 56 | 3.2.1.12 | 个人中心 | manual | 1d | 2020-04-16 | 2020-04-16 | 55 |  | 程序员1 | 8h | 400 |

| ID | WBS | Task | Type | Duration | Start | Finish | Predecessors | Total slack | Resources | Work | Cost |
| --- | --- | --- | --- | --- | --- | --- | --- | --- | --- | --- | --- |
| 57 | 3.2.2 | **商家模块** |  | 6d | 2020-04-03 | 2020-04-10 |  | 0d |  | 48h | 2,400 |
| 58 | 3.2.2.1 | 注册入驻 | manual | 1d | 2020-04-03 | 2020-04-03 | 42 |  | 程序员2 | 8h | 400 |
| 59 | 3.2.2.2 | 商品管理 | manual | 1d | 2020-04-06 | 2020-04-06 | 58 |  | 程序员2 | 8h | 400 |
| 60 | 3.2.2.3 | 订单处理 | manual | 1d | 2020-04-07 | 2020-04-07 | 59 |  | 程序员2 | 8h | 400 |
| 61 | 3.2.2.4 | 统计 | manual | 1d | 2020-04-08 | 2020-04-08 | 60 |  | 程序员2 | 8h | 400 |
| 62 | 3.2.2.5 | 身份证明 | manual | 1d | 2020-04-09 | 2020-04-09 | 61 |  | 程序员2 | 8h | 400 |
| 63 | 3.2.2.6 | 商家配置 | manual | 1d | 2020-04-10 | 2020-04-10 | 62 |  | 程序员2 | 8h | 400 |
| 64 | 3.2.3 | **管理员模块** |  | 4d | 2020-04-03 | 2020-04-08 |  | 0d |  | 32h | 1,600 |
| 65 | 3.2.3.1 | 商家审核 | manual | 1d | 2020-04-03 | 2020-04-03 | 42 |  | 程序员3 | 8h | 400 |
| 66 | 3.2.3.2 | 促销活动 | manual | 1d | 2020-04-06 | 2020-04-06 | 65 |  | 程序员3 | 8h | 400 |
| 67 | 3.2.3.3 | 统计分析 | manual | 1d | 2020-04-07 | 2020-04-07 | 66 |  | 程序员3 | 8h | 400 |
| 68 | 3.2.3.4 | 备份 | manual | 1d | 2020-04-08 | 2020-04-08 | 67 |  | 程序员3 | 8h | 400 |
| 69 | 3.3 | **项目监控** |  | 4d | 2020-04-03 | 2020-04-08 |  | 0d |  | 72h | 2,960 |
| 70 | 3.3.1 | 各项指标监控 | manual | 1d | 2020-04-03 | 2020-04-03 | 42 |  | 测试员1; 项目经理 | 16h | 640 |
| 71 | 3.3.2 | 监控评审 | manual | 1d | 2020-04-06 | 2020-04-06 | 70 |  | 设计专家; 项目经理 | 16h | 640 |
| 72 | 3.3.3 | 变更评审 | manual | 1d | 2020-04-07 | 2020-04-07 | 71 |  | 设计专家; 项目经理 | 16h | 640 |
| 73 | 3.3.4 | 例会 | manual | 1d | 2020-04-08 | 2020-04-08 | 42 |  | UI专家; 测试员1; 测试员2 | 24h | 1,040 |
| 74 | 3.4 | **管理干系人** |  | 1d | 2020-04-03 | 2020-04-03 |  | 0d |  | 24h | 960 |
| 75 | 3.4.1 | 发布项目信息 | manual | 1d | 2020-04-03 | 2020-04-03 | 42 |  | 项目经理 | 8h | 320 |
| 76 | 3.4.2 | 报告监控指标 | manual | 1d | 2020-04-03 | 2020-04-03 | 42 |  | 项目经理 | 8h | 320 |
| 77 | 3.4.3 | 干系人沟通 | manual | 1d | 2020-04-03 | 2020-04-03 | 42 |  | 项目经理 | 8h | 320 |
| 78 | 3.5 | **团队建设** |  | 1d | 2020-04-03 | 2020-04-03 |  | 0d |  | 264h | 12,000 |
| 79 | 3.5.1 | 培训 | manual | 1d | 2020-04-03 | 2020-04-03 | 42 |  | UI专家; 测试员1; 测试员2; 产品经理; 程序员1; 程序员2; 程序员3; 设计专家; 项目经理; 需求专家; 质量专家 | 88h | 4,000 |
| 80 | 3.5.2 | 娱乐活动 | manual | 1d | 2020-04-03 | 2020-04-03 | 42 |  | UI专家; 测试员1; 测试员2; 产品经理; 程序员1; 程序员2; 程序员3; 设计专家; 项目经理; 需求专家; 质量专家 | 88h | 4,000 |
| 81 | 3.5.3 | 沟通 | manual | 1d | 2020-04-03 | 2020-04-03 | 42 |  | UI专家; 测试员1; 测试员2; 产品经理; 程序员1; 程序员2; 程序员3; 设计专家; 项目经理; 需求专家; 质量专家 | 88h | 4,000 |
| 82 | 3.6 | 采购 |  | 1d | 2020-04-03 | 2020-04-03 | 42 | 11d | 项目经理 | 8h | 320 |
| 83 | 3.7 | 项目验收 | manual | 1d | 2020-04-17 | 2020-04-17 | 43 |  | UI专家; 设计专家; 产品经理; 项目经理; 需求专家; 质量专家 | 48h | 2,160 |

| ID | WBS | Task | Type | Duration | Start | Finish | Predecessors | Total slack | Resources | Work | Cost |
| --- | --- | --- | --- | --- | --- | --- | --- | --- | --- | --- | --- |
| 84 | 4 | **收尾** |  | 1d | 2020-04-20 | 2020-04-20 |  | 0d |  | 120h | 5,280 |
| 85 | 4.1 | 项目终验 | manual | 1d | 2020-04-20 | 2020-04-20 | 83 |  | UI专家; 设计专家; 产品经理; 项目经理; 需求专家; 质量专家 | 48h | 2,160 |
| 86 | 4.2 | 结束采购 | manual | 1d | 2020-04-20 | 2020-04-20 | 83 |  | 项目经理 | 8h | 320 |
| 87 | 4.3 | 项目内部收尾 | manual | 1d | 2020-04-20 | 2020-04-20 | 83 |  | UI专家; 测试员1; 测试员2; 产品经理; 设计专家; 项目经理; 需求专家; 质量专家 | 64h | 2,800 |
